# Proyecto Fin de Carrera

Schedule from MS Project, 2014-01-20 to 2014-11-24, 6 hours a day, A marks actual dates.
Desarrollo de un prototipo software, para la grabación y posterior reproducción del audio y video del puesto multipantalla presente en las torres de control. / Como paso intermedio, se codificarán los archivos generados con el fin de reducir el espacio que ocupen en disco. / Finalmente se procederá a la implantación del software en los equipos de Indra.

## Calendars

- Standard: Mon-Fri 08:00-11:00, 17:00-20:00; Sat-Sun 10:00-12:00.

## Resources

| Resource |
| --- |
| 20/04/2014 |

## Schedule

| ID | WBS | Task | Duration | Start | Finish | Complete | Constraint | Work | Actual work |
| --- | --- | --- | --- | --- | --- | --- | --- | --- | --- |
| 1 | 1 | **Fase de evaluación** | 1d | 2014-01-20 A | 2014-01-30 A | 100% | must start on 2014-01-20 | 58h | 58h |
| 2 | 1.1 | Especificaciones técnicas | 3d | 2014-01-20 A | 2014-01-22 A | 100% | must finish on 2014-01-22 | 18h | 18h |
| 3 | 1.2 | Análisis comparativo de posibles soluciones | 1.1w | 2014-01-23 A | 2014-01-27 A | 100% | must start on 2014-01-23 | 22h | 22h |
| 4 | 1.3 | Solución escogida | 3d | 2014-01-28 A | 2014-01-30 A | 100% | must start on 2014-01-28 | 18h | 18h |
| 5 | 2 | **Fase de desarrollo** | 69d | 2014-02-10 A | 2014-05-05 A | 100% | must start on 2014-02-10 | 408h | 408h |
| 6 | 2.1 | **Grabación y procesado de los flujos** | 40.67d | 2014-02-10 A | 2014-03-31 A | 100% | must start on 2014-02-10 | 246h | 246h |
| 7 | 2.1.1 | Grabación de video | 19.83d | 2014-02-10 A | 2014-03-05 A | 100% | must start on 2014-02-10 | 120h | 120h |
| 8 | 2.1.2 | Grabación de entrada de audio | 1.2w | 2014-03-06 A | 2014-03-11 A | 100% | must start on 2014-03-06 | 24h | 24h |
| 9 | 2.1.3 | Codificación de los ficheros generados | 5.1w | 2014-03-11 A | 2014-03-31 A | 100% | must start on 2014-03-11 | 102h | 102h |
| 10 | 2.2 | **Reproduccion del puesto multipantalla** | 20.33d | 2014-04-02 A | 2014-04-26 A | 100% | finish no earlier than 2014-01-29 | 120h | 120h |
| 11 | 2.2.1 | Sincronismo de ficheros | 2.7w | 2014-04-02 A | 2014-04-12 A | 100% | must start on 2014-04-02 | 54h | 54h |
| 12 | 2.2.2 | Interfaz de reproducción | 11d | 2014-04-14 A | 2014-04-26 A | 100% | must start on 2014-04-14 | 66h | 66h |
| 13 | 2.3 | **Desarrollo de la interfaz gráfica** | 6.67d | 2014-04-28 A | 2014-05-05 A | 100% | must start on 2014-04-14 | 42h | 42h |
| 14 | 2.3.1 | Diálogos con el usuario | 3d | 2014-04-28 A | 2014-04-30 A | 100% | must start on 2014-04-28 | 18h | 18h |
| 15 | 2.3.2 | Creación de menús | 4d | 2014-04-30 A | 2014-05-05 A | 100% |  | 24h | 24h |
| 16 | 3 | **Fase de testeo** | 100d | 2014-06-02 A | 2014-10-03 A | 100% | must start on 2014-06-02 | 408h | 408h |
| 17 | 3.1 | **Local** | 30.67d | 2014-06-02 A | 2014-07-09 A | 100% | start no earlier than 2014-06-02 | 168h | 168h |
| 18 | 3.1.1 | Instalación del prototipo software | 5d | 2014-06-02 A | 2014-06-08 A | 100% | start no earlier than 2014-06-02 | 30h | 30h |
| 19 | 3.1.2 | Problemas y soluciones | 20d | 2014-06-09 A | 2014-07-02 A | 100% | must start on 2014-06-09 | 120h | 120h |
| 20 | 3.1.3 | Pruebas de rendimiento | 3d | 2014-07-07 A | 2014-07-09 A | 100% | must start on 2014-07-07 | 18h | 18h |
| 21 | 3.2 | **Cliente** | 26.33d | 2014-09-01 A | 2014-10-03 A | 100% | start no earlier than 2014-09-01 | 240h | 240h |
| 22 | 3.2.1 | Instalación del prototipo software | 15d | 2014-09-01 A | 2014-09-19 A | 100% | start no earlier than 2014-09-01 | 90h | 90h |
| 23 | 3.2.2 | Posibles problemas | 15d | 2014-09-15 A | 2014-10-02 A | 100% | must start on 2014-09-15 | 90h | 90h |
| 24 | 3.2.3 | Diferencias con equipo de desarrollo | 10d | 2014-09-22 A | 2014-10-03 A | 100% | must start on 2014-09-22 | 60h | 60h |

| ID | WBS | Task | Duration | Start | Finish | Complete | Remaining | Total slack | Constraint | Work | Actual work |
| --- | --- | --- | --- | --- | --- | --- | --- | --- | --- | --- | --- |
| 25 | 4 | **Fase final** | 113d | 2014-07-07 A | 2014-11-24 | 99% | 0.24d |  | start no earlier than 2014-06-16 | 946h | 944h |
| 26 | 4.1 | **Memoria** | 113d | 2014-07-07 A | 2014-11-24 | 99% | 0.27d |  | must start on 2014-07-07 | 838h | 836h |
| 27 | 4.1.1 | Primera versión | 3.98mo | 2014-07-07 A | 2014-10-13 | 99% | 0.02mo | 0d | must start on 2014-07-08 | 478h | 476h |
| 28 | 4.1.2 | Revisión | 40d | 2014-10-06 A | 2014-11-24 A | 100% |  |  | must start on 2014-10-06 | 240h | 240h |
| 29 | 4.1.3 | Versión final | 20d | 2014-10-20 A | 2014-11-12 A | 100% |  |  | must start on 2014-10-20 | 120h | 120h |
| 30 | 4.2 | **Presentación** | 11.33d | 2014-11-03 A | 2014-11-16 A | 100% |  |  | must start on 2014-11-03 | 108h | 108h |
| 31 | 4.2.1 | Primera versión | 10d | 2014-11-03 A | 2014-11-14 A | 100% |  |  | must start on 2014-11-03 | 60h | 60h |
| 32 | 4.2.2 | Revisión | 5d | 2014-11-10 A | 2014-11-14 A | 100% |  |  | must start on 2014-11-10 | 30h | 30h |
| 33 | 4.2.3 | Versión final | 3d | 2014-11-12 A | 2014-11-16 A | 100% |  |  | must start on 2014-11-12 | 18h | 18h |
